How a schedule from Primavera P6 changed from version to version. A marks actual dates.

## Version 1 (saved 2026-11-14, file clinic_baseline.xer)

Note of the change: Schedule analysis and progress updates against a fixed baseline

| ID | Task | Duration | Predecessors |
| --- | --- | --- | --- |
| A100 | Mobilisation | 10d |  |
| A110 | Excavation | 20d | A100 |
| A120 | Footings concrete | 25d | A110 |
| A130 | Columns ground floor | 20d | A120 |
| A140 | Slab first floor | 25d | A130 |
| A150 | Columns first floor | 20d | A140 |
| A160 | Roof slab | 25d | A150 |
| A170 | Masonry walls | 40d | A140 |
| A180 | Electrical first fix | 30d | A170 |
| A190 | Plumbing first fix | 30d | A170 |
| A200 | Plaster and finishes | 45d | A180, A190, A160 |
| A210 | External works | 30d | A160 |
| A220 | Handover | 0d | A200, A210 |

## Version 2 (saved 2026-11-14, file clinic_update_june.xer)

Note of the change: Merge PRs #9 and #10: no-progress-report model, schedule analysis and progress updates

Complete tasks 0 → 5.

Changed:

| ID | Task | Complete |
| --- | --- | --- |
| A100 | Mobilisation | 0% → 100% |
| A110 | Excavation | 0% → 100% |
| A120 | Footings concrete | 0% → 100% |
| A130 | Columns ground floor | 0% → 100% |
| A140 | Slab first floor | 0% → 100% |
| A150 | Columns first floor | 0% → 53% |
| A170 | Masonry walls | 0% → 27% |

## Version 3 (saved 2026-11-14, file clinic_update_march.xer)

Note of the change: Merge PR #13: bring PRs #9, #10 and #11 onto main

Complete tasks 5 → 3.

Changed:

| ID | Task | Complete |
| --- | --- | --- |
| A130 | Columns ground floor | 100% → 4% |
| A140 | Slab first floor | 100% → 0% |
| A150 | Columns first floor | 53% → 0% |
| A170 | Masonry walls | 27% → 0% |
